# MNO01 - versie 1

Schedule from MS Project, 2019-11-05 to 2020-01-06, costs in €.

## Calendars

- MNO01: Mon-Fri 08:00-12:00, 12:30-16:30; Sat-Sun off. Exceptions (off unless hours are given): 2019-11-11 (Gesloten), 2019-12-25 to 2019-12-27 (Gesloten).

## Resources

| Resource | Rate |
| --- | --- |
| Cindy | 55 |
| Rudy | 40 |
| Ronny | 35 |
| Davy | 35 |
| Architectuur | 750 |

## Schedule

| ID | WBS | Task | Type | Duration | Start | Finish | Predecessors | Baseline start | Baseline finish | Baseline duration | Total slack | Free slack | Resources | Work | Cost | Baseline cost |
| --- | --- | --- | --- | --- | --- | --- | --- | --- | --- | --- | --- | --- | --- | --- | --- | --- |
| 1 | 1 | **Analysefase** |  | 12d | 2019-11-05 | 2019-11-21 |  | 2019-11-05 | 2019-11-21 | 12d | 1d |  |  | 320h | 14,150 | 14,150 |
| 2 | 1.1 | Bespreking van de opdracht |  | 5d | 2019-11-05 | 2019-11-12 |  | 2019-11-05 | 2019-11-12 | 5d | 1d | 0d | Cindy; Davy; Ronny; Rudy | 160h | 6,600 | 6,600 |
| 3 | 1.2 | Uitschrijven van user requirements |  | 2d | 2019-11-13 | 2019-11-14 | 2 | 2019-11-13 | 2019-11-14 | 2d | 1d | 0d | Cindy; Rudy | 32h | 1,520 | 1,520 |
| 4 | 1.3 | Analyse architectuur |  | 3d | 2019-11-15 | 2019-11-19 | 3 | 2019-11-15 | 2019-11-19 | 3d | 1d |  | Davy; Architectuur | 24h | 1,590 | 1,590 |
| 5 | 1.4 | Opstellen van mock-up's |  | 4d | 2019-11-15 | 2019-11-20 | 3 | 2019-11-15 | 2019-11-20 | 4d | 2d | 1d | Cindy; Rudy | 64h | 3,040 | 3,040 |
| 6 | 1.5 | Prototypes aanmaken |  | 5d | 2019-11-15 | 2019-11-21 | 3 | 2019-11-15 | 2019-11-21 | 5d | 1d | 0d | Ronny | 40h | 1,400 | 1,400 |
| 7 | 1.6 | Einde analysefase | milestone | 0d | 2019-11-21 | 2019-11-21 | 6, 4, 5 | 2019-11-21 | 2019-11-21 | 0d | 1d | 0d |  |  |  |  |
| 8 | 2 | **Ontwikkeling feature A** |  | 9d | 2019-11-22 | 2019-12-04 |  | 2019-11-22 | 2019-12-04 | 9d | 0d |  |  | 160h | 6,560 | 6,560 |
| 9 | 2.1 | Voorbereiding releaseplanning A |  | 2d | 2019-11-22 | 2019-11-25 | 7 | 2019-11-22 | 2019-11-25 | 2d | 7d |  | Rudy | 16h | 640 | 640 |
| 10 | 2.2 | Uitwerken van testcases A |  | 4d | 2019-11-25 | 2019-11-28 | 7 | 2019-11-25 | 2019-11-28 | 4d | 0d |  | Davy | 32h | 1,120 | 1,120 |
| 11 | 2.3 | Ontwikkeling software A |  | 5d | 2019-11-22 | 2019-11-28 | 7 | 2019-11-22 | 2019-11-28 | 5d | 2d |  | Ronny; Cindy | 80h | 3,600 | 3,600 |
| 12 | 2.4 | Testen van feature A |  | 2d | 2019-11-29 | 2019-12-02 | 10 | 2019-11-29 | 2019-12-02 | 2d | 0d |  | Davy | 16h | 560 | 560 |
| 13 | 2.5 | Bugfixen feature A |  | 2d | 2019-12-03 | 2019-12-04 | 12, 11 | 2019-12-03 | 2019-12-04 | 2d | 0d |  | Rudy | 16h | 640 | 640 |
| 14 | 2.6 | Einde ontwikkeling feature A | milestone | 0d | 2019-12-04 | 2019-12-04 | 13, 9 | 2019-12-04 | 2019-12-04 | 0d | 0d |  |  |  |  |  |
| 15 | 3 | **Ontwikkeling feature B** |  | 10d | 2019-12-05 | 2019-12-18 |  | 2019-12-05 | 2019-12-18 | 10d | 0d |  |  | 116h | 4,580 | 4,580 |
| 16 | 3.1 | Voorbereiden releaseplanning B |  | 1.5d | 2019-12-05 | 2019-12-06 | 14 | 2019-12-05 | 2019-12-06 | 1.5d | 8.5d |  | Cindy | 12h | 660 | 660 |
| 17 | 3.2 | Uitwerken van testcases B |  | 3d | 2019-12-05 | 2019-12-09 | 14 | 2019-12-05 | 2019-12-09 | 3d | 0d |  | Rudy | 24h | 960 | 960 |
| 18 | 3.3 | Ontwikkeling software B |  | 6d | 2019-12-05 | 2019-12-12 | 14 | 2019-12-05 | 2019-12-12 | 6d | 3d |  | Ronny | 48h | 1,680 | 1,680 |
| 19 | 3.4 | Testen software B |  | 3d | 2019-12-13 | 2019-12-17 | 17 | 2019-12-13 | 2019-12-17 | 3d | 0d |  | Ronny | 24h | 840 | 840 |
| 20 | 3.5 | Bugfixen feature B |  | 1d | 2019-12-18 | 2019-12-18 | 18, 19 | 2019-12-18 | 2019-12-18 | 1d | 0d |  | Cindy | 8h | 440 | 440 |
| 21 | 3.6 | Einde ontwikkeling feature B | milestone | 0d | 2019-12-18 | 2019-12-18 | 20, 16 | 2019-12-18 | 2019-12-18 | 0d | 0d |  |  |  |  |  |
| 22 | 4 | **Release fase** |  | 7d | 2019-12-24 | 2020-01-06 |  | 2019-12-24 | 2020-01-06 | 7d | 0d |  |  | 72h | 2,600 | 2,600 |
| 23 | 4.1 | Integratietesten |  | 5d | 2019-12-24 | 2020-01-02 | 21FS+3d | 2019-12-24 | 2020-01-02 | 5d | 0d |  | Davy | 40h | 1,400 | 1,400 |
| 24 | 4.2 | Release naar productie |  | 2d | 2020-01-03 | 2020-01-06 | 23 | 2020-01-03 | 2020-01-06 | 2d | 0d |  | Ronny; Rudy | 32h | 1,200 | 1,200 |
| 25 | 4.3 | Einde release fase | milestone | 0d | 2020-01-06 | 2020-01-06 | 24 | 2020-01-06 | 2020-01-06 | 0d | 0d |  |  |  |  |  |
